# Project MacOS

How a schedule from MS Project changed from version to version. A marks actual dates.

## Version 1 (saved 2019-03-28)

Note of the change: Plan (WIP)

| ID | WBS | Task | Duration | Start | Finish | Predecessors | Constraint |
| --- | --- | --- | --- | --- | --- | --- | --- |
| 1 | 1 | **MacOS Stream** | 60.5d | 2019-02-25 18:00 | 2019-04-26 22:00 |  |  |
| 2 |  | Research | 22d | 2019-02-26 16:00 | 2019-03-20 16:00 |  | start no earlier than 2019-02-26 16:00 |
| 3 |  | Prototype | 3.5d | 2019-03-21 08:00 | 2019-03-24 12:00 | 2 | start no earlier than 2019-03-21 08:00 |
| 4 | 1.3 | **Development** | 21d | 2019-03-25 09:00 | 2019-04-14 18:00 | 3 |  |
| 5 | 1.3.1 | **Control** | 7.88d | 2019-03-25 11:00 | 2019-04-01 19:00 |  |  |
| 6 |  | Receiving commands on ios | 5d | 2019-03-25 06:00 | 2019-03-29 05:00 |  |  |
| 7 |  | Command implementation | 2.5d | 2019-03-29 16:00 | 2019-04-01 11:00 | 6 |  |
| 8 |  | Code review | 0.38d | 2019-04-01 08:00 | 2019-04-01 11:00 |  |  |
| 9 |  | Correction after review | 0.5d | 2019-04-01 14:00 | 2019-04-01 18:00 |  |  |
| 10 | 1.3.2 | **data transfer** | 10.62d | 2019-03-25 18:00 | 2019-04-05 15:00 |  |  |
| 11 |  | Server | 6d | 2019-03-25 18:00 | 2019-03-31 18:00 |  |  |
| 12 |  | Client | 3d | 2019-04-01 12:00 | 2019-04-04 12:00 |  |  |
| 13 |  | code review | 0.5d | 2019-04-04 18:00 | 2019-04-04 22:00 |  | start no earlier than 2019-04-04 18:00 |
| 14 |  | Correction after review | 0.5d | 2019-04-04 18:00 | 2019-04-05 13:00 |  |  |
| 15 | 1.3.3 | **Stream Display** | 9d | 2019-04-05 18:00 | 2019-04-14 18:00 |  |  |
| 16 |  | Image Recorder + scaling | 0.5d | 2019-04-05 18:00 | 2019-04-05 22:00 |  |  |
| 17 |  | [OPTIONAL] Encode stream | 2.93d | 2019-04-06 09:21 | 2019-04-08 17:48 |  |  |
| 18 |  | Video display | 2d | 2019-04-08 17:48 | 2019-04-10 17:48 | 17 |  |
| 19 |  | code review | 0.5d | 2019-04-11 18:00 | 2019-04-11 22:00 |  |  |
| 20 |  | Correction after review | 2d | 2019-04-12 18:00 | 2019-04-14 18:00 |  |  |
| 21 |  | User Interface | 2.5d | 2019-04-03 18:00 | 2019-04-06 13:00 | 5 |  |
| 22 | 1.4 | **Testing** | 12.5d | 2019-04-07 05:00 | 2019-04-18 18:00 | 21, 18 |  |
| 23 |  | testing project | 0.5d | 2019-04-07 05:00 | 2019-04-07 13:00 |  |  |
| 24 |  | fix bug | 0.5d | 2019-04-07 05:00 | 2019-04-07 13:00 |  |  |
| 25 |  | unit_test | 8.5d | 2019-04-07 05:00 | 2019-04-14 18:00 |  |  |
| 26 |  | docudocumentation | 12.5d | 2019-04-07 05:00 | 2019-04-18 18:00 |  |  |
| 27 |  | Presentation | 12.5d | 2019-04-07 05:00 | 2019-04-18 18:00 | 21 |  |
| 28 |  | general refinement | 7d | 2019-04-18 09:00 | 2019-04-24 18:00 |  |  |

## Version 2 (saved 2019-04-05)

Note of the change: Updated plan for network and image processing

Last finish stays 2019-04-26.

Added:

| ID | Task | Duration | Start | Finish | Resources |
| --- | --- | --- | --- | --- | --- |
| 12 | Deep research (Reactor, SocketAcceptor, TCP and UDP. Image scaling) | 10.5d | 2019-03-26 09:00 | 2019-04-04 22:00 | Nikita Dik |
| 13 | **Primary tasks** | 5.5d | 2019-04-04 18:00 | 2019-04-09 22:00 |  |
| 14 | 1 to 1 TCP Connection Acceptor (Scalable) | 4.5d | 2019-04-04 18:00 | 2019-04-08 22:00 | Nikita Dik |
| 15 | TCP stream "packet" framer ( for user input and dynamically sized images) | 0.5d | 2019-04-08 18:00 | 2019-04-08 22:00 | Nikita Dik |
| 16 | TCP message receiver and de-framer | 0.5d | 2019-04-08 18:00 | 2019-04-08 22:00 | Nikita Dik |
| 17 | InputReceiver | 0.5d | 2019-04-09 18:00 | 2019-04-09 22:00 | Nikita Dik |
| 18 | InputManager | 0.5d | 2019-04-09 18:00 | 2019-04-09 22:00 | Nikita Dik |
| 20 | Connection/reconnection | 0.5d | 2019-04-09 18:00 | 2019-04-09 22:00 | Nikita Dik |
| 21 | Video frame receiver | 0.5d | 2019-04-10 09:00 | 2019-04-10 13:00 | Nikita Dik |
| 22 | Input events sender | 0.5d | 2019-04-10 18:00 | 2019-04-10 22:00 | Nikita Dik |
| 28 | Bytes to image converter | 0.5d | 2019-04-12 18:00 | 2019-04-12 22:00 | Nikita Dik |
| 31 | **Additional Tasks** | 5.5d | 2019-04-13 18:00 | 2019-04-18 22:00 |  |
| 32 | Image encoding / decoding | 2.5d | 2019-04-13 18:00 | 2019-04-15 22:00 | Nikita Dik |
| 33 | UDP video streamer | 1.5d | 2019-04-15 18:00 | 2019-04-17 13:00 | Nikita Dik |
| 34 | Provide ability to have multiple TCP clients and UDP multicast in the future | 1.5d | 2019-04-17 18:00 | 2019-04-18 22:00 | Nikita Dik |
| 35 | Presentation (paralel to dev) | 3d | 2019-04-14 18:00 | 2019-04-17 18:00 | Stas Bespalov, Nikita Dik |
| 36 | Documentation re-read | 1.5d | 2019-04-17 18:00 | 2019-04-18 22:00 | Stas Bespalov, Nikita Dik |

Removed: 17 [OPTIONAL] Encode stream; 22 Testing; 23 testing project; 24 fix bug; 25 unit_test; 26 docudocumentation; 27 Presentation

Changed:

| ID | Task | Start | Finish | Duration | Predecessors | Other |
| --- | --- | --- | --- | --- | --- | --- |
| 4 | **Development ( time including documentation and TDD )** |  | 2019-04-14 18:00 → 2019-04-18 22:00 (+4d) | 21d → 25.5d |  | was named Development |
| 10 | **Data transfer** |  | 2019-04-05 15:00 → 2019-04-13 13:00 (+8d) | 10.62d → 18.5d |  | was named data transfer |
| 11 | **Server** |  | 2019-03-31 18:00 → 2019-04-10 22:00 (+10d) | 6d → 16.5d |  | resources Nikita Dik → none |
| 19 | **Client** | 2019-04-01 12:00 → 2019-04-09 18:00 (+8d) | 2019-04-04 12:00 → 2019-04-12 13:00 (+8d) | 3d → 2.5d |  | resources Nikita Dik → none |
| 23 | Code review | 2019-04-04 18:00 → 2019-04-10 18:00 (+6d) | 2019-04-04 22:00 → 2019-04-10 22:00 (+6d) |  |  | was named code review; constraint start no earlier than 2019-04-04 18:00 → start no earlier than 2019-04-10 18:00 |
| 24 | Correction after review | 2019-04-04 18:00 → 2019-04-11 14:00 (+7d) | 2019-04-05 13:00 → 2019-04-11 22:00 (+6d) | 0.5d → 1d |  |  |
| 25 | **Stream Display** | 2019-04-05 18:00 → 2019-04-12 08:30 (+7d) | 2019-04-14 18:00 → 2019-04-13 23:30 (-1d) | 9d → 2.75d |  |  |
| 26 | ScreenGrabber | 2019-04-05 18:00 → 2019-04-12 08:30 (+7d) | 2019-04-05 22:00 → 2019-04-12 23:30 (+7d) | 0.5d → 1.75d |  | was named Image Recorder + scaling |
| 27 | **Rendering** | 2019-04-08 17:48 → 2019-04-12 18:00 (+4d) | 2019-04-10 17:48 → 2019-04-12 22:00 (+2d) | 2d → 0.5d | [OPTIONAL] Encode stream → none | was named Video display; resources Nikita Dik → none |
| 29 | Code review | 2019-04-11 18:00 → 2019-04-12 18:00 (+1d) | 2019-04-11 22:00 → 2019-04-12 22:00 (+1d) |  |  | was named code review |
| 30 | Correction after review |  | 2019-04-14 18:00 → 2019-04-13 22:00 (-1d) | 2d → 1.5d |  |  |

## Version 3 (saved 2019-04-12)

Note of the change: Update plan for new release date

Last finish stays 2019-04-26.

Added:

| ID | Task | Duration | Start | Finish |
| --- | --- | --- | --- | --- |
| 16 | [Optional] Object-oriented TCP framer | 1.75d | 2019-04-12 | 2019-04-12 |
| 18 | Fast encoder | 4.75d | 2019-04-14 | 2019-04-17 |
| 35 | Stream encryption | 2.75d | 2019-04-23 | 2019-04-24 |

Removed: 32 Image encoding / decoding; 34 Provide ability to have multiple TCP clients and UDP multicast in the future

Changed:

| ID | Task | Start | Finish | Duration | Other |
| --- | --- | --- | --- | --- | --- |
| 1 | **MacOS Stream** | 2019-02-25 18:00 → 2019-02-25 | 2019-04-26 22:00 → 2019-04-26 |  |  |
| 2 | Research | 2019-02-26 16:00 → 2019-02-26 | 2019-03-20 16:00 → 2019-03-20 |  | constraint start no earlier than 2019-02-26 16:00 → start no earlier than 2019-02-26 |
| 3 | Prototype | 2019-03-21 08:00 → 2019-03-21 | 2019-03-24 12:00 → 2019-03-24 |  | constraint start no earlier than 2019-03-21 08:00 → start no earlier than 2019-03-21 |
| 4 | **Development (time including documentation and tests covering)** | 2019-03-25 09:00 → 2019-03-25 | 2019-04-18 22:00 → 2019-04-24 (+6d) | 25.5d → 31.69d | was named Development ( time including documentation and TDD ) |
| 5 | **Control** | 2019-03-25 11:00 → 2019-03-25 | 2019-04-01 19:00 → 2019-04-01 |  |  |
| 6 | Receiving commands on ios | 2019-03-25 06:00 → 2019-03-25 | 2019-03-29 05:00 → 2019-03-29 |  |  |
| 7 | Command implementation | 2019-03-29 16:00 → 2019-03-29 | 2019-04-01 11:00 → 2019-04-01 |  |  |
| 8 | Code review | 2019-04-01 08:00 → 2019-04-01 | 2019-04-01 11:00 → 2019-04-01 |  |  |
| 9 | Correction after review | 2019-04-01 14:00 → 2019-04-01 | 2019-04-01 18:00 → 2019-04-01 |  |  |
| 10 | **Data transfer** | 2019-03-25 18:00 → 2019-03-25 | 2019-04-13 13:00 → 2019-04-20 (+7d) | 18.5d → 26.69d |  |
| 11 | **Server** | 2019-03-25 18:00 → 2019-03-25 | 2019-04-10 22:00 → 2019-04-18 (+8d) | 16.5d → 24.69d |  |
| 12 | Deep research (Reactor, SocketAcceptor, TCP and UDP. Image scaling) | 2019-03-26 09:00 → 2019-03-26 | 2019-04-04 22:00 → 2019-04-04 |  |  |
| 13 | **Primary tasks** | 2019-04-04 18:00 → 2019-04-04 | 2019-04-09 22:00 → 2019-04-18 (+9d) | 5.5d → 14.69d |  |
| 14 | 1 to 1 TCP connection implementation (one paralel thread worker) | 2019-04-04 18:00 → 2019-04-04 | 2019-04-08 22:00 → 2019-04-09 (+1d) | 4.5d → 5.69d | was named 1 to 1 TCP Connection Acceptor (Scalable) |
| 15 | TCP stream "packet" framer (for user input and dynamically sized images) | 2019-04-08 18:00 → 2019-04-09 (+1d) | 2019-04-08 22:00 → 2019-04-12 (+4d) | 0.5d → 3.75d | was named TCP stream "packet" framer ( for user input and dynamically sized images) |
| 17 | TCP message receiver and de-framer | 2019-04-08 18:00 → 2019-04-12 (+4d) | 2019-04-08 22:00 → 2019-04-14 (+6d) | 0.5d → 3.75d |  |
| 19 | InputReceiver | 2019-04-09 18:00 → 2019-04-17 (+8d) | 2019-04-09 22:00 → 2019-04-17 (+8d) | 0.5d → 1.75d |  |
| 20 | InputManager | 2019-04-09 18:00 → 2019-04-17 (+8d) | 2019-04-09 22:00 → 2019-04-18 (+9d) | 0.5d → 2.75d |  |
| 21 | **Client** | 2019-04-09 18:00 → 2019-04-18 (+9d) | 2019-04-12 13:00 → 2019-04-20 (+8d) | 2.5d → 3.75d |  |
| 22 | Connection/reconnection | 2019-04-09 18:00 → 2019-04-18 (+9d) | 2019-04-09 22:00 → 2019-04-18 (+9d) |  |  |
| 23 | Video frame receiver | 2019-04-10 09:00 → 2019-04-18 (+8d) | 2019-04-10 13:00 → 2019-04-19 (+9d) | 0.5d → 2.75d |  |
| 24 | Input events sender | 2019-04-10 18:00 → 2019-04-19 (+9d) | 2019-04-10 22:00 → 2019-04-19 (+9d) |  |  |
| 25 | Code review | 2019-04-10 18:00 → 2019-04-19 (+9d) | 2019-04-10 22:00 → 2019-04-19 (+9d) |  | constraint start no earlier than 2019-04-10 18:00 → start no earlier than 2019-04-19 |
| 26 | Correction after review | 2019-04-11 14:00 → 2019-04-19 (+8d) | 2019-04-11 22:00 → 2019-04-20 (+9d) | 1d → 2.75d |  |
| 27 | **Stream Display** | 2019-04-12 08:30 → 2019-04-20 (+8d) | 2019-04-13 23:30 → 2019-04-22 (+9d) |  |  |
| 28 | ScreenGrabber | 2019-04-12 08:30 → 2019-04-20 (+8d) | 2019-04-12 23:30 → 2019-04-21 (+9d) |  |  |
| 29 | **Rendering** | 2019-04-12 18:00 → 2019-04-21 (+9d) | 2019-04-12 22:00 → 2019-04-21 (+9d) |  |  |
| 30 | Bytes to image converter | 2019-04-12 18:00 → 2019-04-21 (+9d) | 2019-04-12 22:00 → 2019-04-21 (+9d) |  |  |
| 31 | Code review | 2019-04-12 18:00 → 2019-04-21 (+9d) | 2019-04-12 22:00 → 2019-04-21 (+9d) |  |  |
| 32 | Correction after review | 2019-04-12 18:00 → 2019-04-21 (+9d) | 2019-04-13 22:00 → 2019-04-22 (+9d) |  |  |
| 33 | **Additional Tasks** | 2019-04-13 18:00 → 2019-04-22 (+9d) | 2019-04-18 22:00 → 2019-04-24 (+6d) | 5.5d → 3.75d |  |
| 34 | UDP video streamer | 2019-04-15 18:00 → 2019-04-22 (+7d) | 2019-04-17 13:00 → 2019-04-23 (+6d) |  |  |
| 36 | Presentation (paralel to dev) | 2019-04-14 18:00 → 2019-04-21 (+7d) | 2019-04-17 18:00 → 2019-04-23 (+6d) | 3d → 3.75d |  |
| 37 | Documentation re-read | 2019-04-17 18:00 → 2019-04-23 (+6d) | 2019-04-18 22:00 → 2019-04-24 (+6d) |  |  |
| 38 | User Interface | 2019-04-03 18:00 → 2019-04-03 | 2019-04-06 13:00 → 2019-04-22 (+16d) | 2.5d → 19.69d |  |
| 39 | general refinement | 2019-04-18 09:00 → 2019-04-18 | 2019-04-24 18:00 → 2019-04-24 |  |  |
